# Lab3

How a schedule from MS Project changed from version to version. A marks actual dates.

## Version 1 (saved 2022-11-16, file câu2.mpp)

Note of the change: Upload file QLDAPM

| ID | WBS | Task | Duration | Start | Finish | Predecessors | Complete | Total float |
| --- | --- | --- | --- | --- | --- | --- | --- | --- |
| 1 |  | Project Statistics (Xem hình statistics.png được gửi đính kèm) | 1d? | 2022-11-01 | 2022-11-01 |  |  |  |
| 2 | 2 | **Front-end** | 41d | 2022-11-01 A | 2022-12-27 |  | 34% |  |
| 3 | 2.1 | **Bản đồ các trạm xe buýt** | 17d | 2022-11-02 A | 2022-11-24 |  | 30% | 0d |
| 4 |  | Vẽ bản đồ địa lý | 5d | 2022-11-08 A | 2022-11-14 |  | 60% |  |
| 5 |  | Vẽ các điểm trạm trên bản đồ | 7d | 2022-11-02 A | 2022-11-24 | 25 | 9% |  |
| 6 | 2.2 | **Thông tin của trạm** | 15d | 2022-11-02 A | 2022-11-22 |  | 53% | 25d |
| 7 |  | Hiển thị các tuyến đi qua trạm (mã tuyến, chiều) | 4d | 2022-11-17 A | 2022-11-22 | 24, 4 | 25% | 25d |
| 8 |  | Hiển thị thông tin cơ bản của từng tuyến | 4d | 2022-11-02 A | 2022-11-07 | 26 | 80% |  |
| 9 | 2.3 | **Tìm đường từ trạm A đến trạm B** | 41d | 2022-11-01 A | 2022-12-27 |  | 23% | 0d |
| 10 |  | Form nhập vị trí hiện tại và vị trí cần đến | 4d | 2022-11-01 A | 2022-11-04 |  | 70% |  |
| 11 |  | Hiển thị danh sách các đường đi khả thi | 5d | 2022-12-16 | 2022-12-22 | 39 |  | 3d |
| 12 |  | Vẽ chi tiết tuyến đường hướng dẫn | 3d | 2022-12-23 | 2022-12-27 | 39, 4 |  | 0d |
| 13 | 2.4 | **Danh sách các tuyến xe buýt** | 4d | 2022-11-11 A | 2022-11-16 |  | 75% | 0d |
| 14 |  | Hiển thị danh sách các tuyến xe bus (mã tuyến, bến đầu bến cuối, giá tiền, đánh giá) | 4d | 2022-11-11 A | 2022-11-16 | 33 | 75% |  |
| 15 | 2.5 | **Chi tiết của tuyến xe buýt cụ thể** | 16d | 2022-11-11 A | 2022-12-02 |  | 32% | 17d |
| 16 |  | Hiển thị thông tin chi tiết (các trạm, thời gian di chuyển giữa các trạm, lịch trình xuất phát) | 5d | 2022-11-28 A | 2022-12-02 | 36 | 24% |  |
| 17 |  | Biểu đồ tuyến đường của các tuyến xe buýt | 5d | 2022-11-11 A | 2022-11-17 | 36 | 40% | 28d |
| 18 | 2.6 | **Đánh giá tuyến xe buýt** | 4d | 2022-11-17 A | 2022-11-22 |  | 20% | 0d |
| 19 |  | Đánh giá theo sao, bình luận cho tuyến | 4d | 2022-11-17 A | 2022-11-22 | 14 | 20% |  |
| 20 | 2.7 | **Tùy chỉnh thông báo** | 17d | 2022-11-23 A | 2022-12-15 |  | 30% | 0d |
| 21 |  | Thông báo chuyến xe sắp đến trạm | 4d | 2022-11-23 A | 2022-12-05 | 43 | 40% |  |
| 22 |  | Thông báo khi tuyến xe thay đổi lịch trình | 4d | 2022-12-12 A | 2022-12-15 | 44 | 20% |  |
| 23 | 3 | **Back-end** | 29d | 2022-11-01 A | 2022-12-09 |  | 42% | 0.8d |
| 24 | 3.1 | **Thiết lập cơ sở dữ liệu** | 1d | 2022-11-01 A | 2022-11-01 |  | 63% | 0d |
| 25 |  | Lấy dữ liệu các trạm từ bên thứ 3 | 1d | 2022-11-01 A | 2022-11-01 |  | 90% |  |
| 26 |  | Lấy dữ liệu các tuyến từ bên thứ 3 | 1d | 2022-11-01 A | 2022-11-01 |  | 50% |  |
| 27 |  | Cập nhật dữ liệu theo chu kỳ | 1d | 2022-11-01 A | 2022-11-01 |  | 50% |  |
| 28 | 3.2 | **API danh sách các trạm xe buýt** | 6d | 2022-11-02 A | 2022-11-09 |  | 27% | 0d |
| 29 |  | Lấy dữ liệu từ cơ sở dữ liệu | 2d | 2022-11-02 A | 2022-11-03 | 25 | 50% |  |
| 30 |  | Xử lý và trả về thông tin các trạm | 4d | 2022-11-04 A | 2022-11-09 | 29 | 15% |  |
| 31 | 3.3 | **API danh sách các tuyến xe buýt** | 7d | 2022-11-02 A | 2022-11-10 |  | 59% | 0d |
| 32 |  | Lấy dữ liệu từ cơ sở dữ liệu | 2d | 2022-11-02 A | 2022-11-03 | 26 | 80% |  |
| 33 |  | Xử lý và trả về thông tin các tuyến xe buýt | 5d | 2022-11-04 A | 2022-11-10 | 32 | 50% |  |
| 34 | 3.4 | **API chi tiết thông tin tuyến xe buýt cụ thể** | 6d | 2022-11-02 A | 2022-11-09 |  | 20% | 3d |
| 35 |  | Lấy dữ liệu từ cơ sở dữ liệu | 2d | 2022-11-02 A | 2022-11-03 | 26 | 60% | 3d |
| 36 |  | Xử lý và trả về thông tin của 1 tuyến xe buýt cụ thể | 4d | 2022-11-04 | 2022-11-09 | 35 |  | 3d |
| 37 | 3.5 | **API danh sách các cách đi khả dụng từ vị trí A đến vị trí B** | 22d | 2022-11-10 A | 2022-12-09 |  | 50% | 0d |
| 38 |  | Tìm các cách di chuyển từ A đến B theo các tiêu chí: đường đi ngắn nhất, chuyển tuyến ít nhất | 10d | 2022-11-10 A | 2022-11-23 | 10 | 75% |  |
| 39 |  | Trả về danh sách kèm theo chi tiết đường đi cụ thể của từng cách | 5d | 2022-12-05 | 2022-12-09 | 38 |  |  |
| 40 | 3.6 | **API đánh giá tuyến xe buýt** | 5d | 2022-11-24 A | 2022-11-30 |  | 20% | 0d |
| 41 |  | Nhận và lưu trữ đánh giá | 5d | 2022-11-24 A | 2022-11-30 | 19 | 20% |  |
| 42 | 3.7 | **API gửi thông báo** | 4d | 2022-11-11 A | 2022-11-16 |  | 45% | 17.8d |
| 43 |  | Thông báo chuyến xe sắp đến trạm | 4d | 2022-11-11 A | 2022-11-16 | 25, 26 | 50% | 5.6d |
| 44 |  | Thông báo khi tuyến xe thay đổi lịch trình | 4d | 2022-11-11 A | 2022-11-16 | 26 | 40% | 17.8d |

## Version 2 (data date 2022-11-19, saved 2022-12-04, file câu5.mpp)

Note of the change: Upload file QLDAPM

Last finish stays 2022-12-27. Complete tasks 0 → 17.

Changed:

| ID | Task | Start | Finish | Duration | Complete | Total float |
| --- | --- | --- | --- | --- | --- | --- |
| 1 | Project Statistics (Xem hình statistics.png được gửi đính kèm) | 2022-11-01 A | 2022-11-01 A | 1d? → 1d | 0% → 100% |  |
| 2 | **Front-end** |  |  |  | 34% → 60% |  |
| 3 | **Bản đồ các trạm xe buýt** |  |  |  | 30% → 83% |  |
| 4 | Vẽ bản đồ địa lý |  | 2022-11-14 A |  | 60% → 100% |  |
| 5 | Vẽ các điểm trạm trên bản đồ |  |  |  | 9% → 71% |  |
| 6 | **Thông tin của trạm** |  |  |  | 53% → 75% |  |
| 7 | Hiển thị các tuyến đi qua trạm (mã tuyến, chiều) |  |  |  | 25% → 50% |  |
| 8 | Hiển thị thông tin cơ bản của từng tuyến |  | 2022-11-07 A |  | 80% → 100% |  |
| 9 | **Tìm đường từ trạm A đến trạm B** |  |  |  | 23% → 33% |  |
| 10 | Form nhập vị trí hiện tại và vị trí cần đến |  | 2022-11-04 A |  | 70% → 100% |  |
| 13 | **Danh sách các tuyến xe buýt** |  | 2022-11-16 A |  | 75% → 100% | 0d → none |
| 14 | Hiển thị danh sách các tuyến xe bus (mã tuyến, bến đầu bến cuối, giá tiền, đánh giá) |  | 2022-11-16 A |  | 75% → 100% |  |
| 15 | **Chi tiết của tuyến xe buýt cụ thể** |  |  |  | 32% → 62% | 17d → 0d |
| 17 | Biểu đồ tuyến đường của các tuyến xe buýt |  | 2022-11-17 A |  | 40% → 100% | 28d → none |
| 18 | **Đánh giá tuyến xe buýt** |  |  |  | 20% → 50% |  |
| 19 | Đánh giá theo sao, bình luận cho tuyến |  |  |  | 20% → 50% |  |
| 23 | **Back-end** |  |  |  | 42% → 76% | 0.8d → 0d |
| 24 | **Thiết lập cơ sở dữ liệu** |  | 2022-11-01 A |  | 63% → 100% | 0d → none |
| 25 | Lấy dữ liệu các trạm từ bên thứ 3 |  | 2022-11-01 A |  | 90% → 100% |  |
| 26 | Lấy dữ liệu các tuyến từ bên thứ 3 |  | 2022-11-01 A |  | 50% → 100% |  |
| 27 | Cập nhật dữ liệu theo chu kỳ |  | 2022-11-01 A |  | 50% → 100% |  |
| 28 | **API danh sách các trạm xe buýt** |  | 2022-11-09 A |  | 27% → 100% | 0d → none |
| 29 | Lấy dữ liệu từ cơ sở dữ liệu |  | 2022-11-03 A |  | 50% → 100% |  |
| 30 | Xử lý và trả về thông tin các trạm |  | 2022-11-09 A |  | 15% → 100% |  |
| 31 | **API danh sách các tuyến xe buýt** |  | 2022-11-10 A |  | 59% → 100% | 0d → none |
| 32 | Lấy dữ liệu từ cơ sở dữ liệu |  | 2022-11-03 A |  | 80% → 100% |  |
| 33 | Xử lý và trả về thông tin các tuyến xe buýt |  | 2022-11-10 A |  | 50% → 100% |  |
| 34 | **API chi tiết thông tin tuyến xe buýt cụ thể** |  | 2022-11-09 A |  | 20% → 100% | 3d → none |
| 35 | Lấy dữ liệu từ cơ sở dữ liệu |  | 2022-11-03 A |  | 60% → 100% | 3d → none |
| 36 | Xử lý và trả về thông tin của 1 tuyến xe buýt cụ thể | 2022-11-04 A | 2022-11-09 A |  | 0% → 100% | 3d → none |
| 37 | **API danh sách các cách đi khả dụng từ vị trí A đến vị trí B** |  |  |  | 50% → 47% |  |
| 38 | Tìm các cách di chuyển từ A đến B theo các tiêu chí: đường đi ngắn nhất, chuyển tuyến ít nhất |  | 2022-11-23 → 2022-11-24 (+1d) |  | 75% → 70% |  |
| 42 | **API gửi thông báo** |  | 2022-11-16 A |  | 45% → 100% | 17.8d → none |
| 43 | Thông báo chuyến xe sắp đến trạm |  | 2022-11-16 A |  | 50% → 100% | 5.6d → none |
| 44 | Thông báo khi tuyến xe thay đổi lịch trình |  | 2022-11-16 A |  | 40% → 100% | 17.8d → none |
