# Lab3

How a schedule from MS Project changed from version to version. A marks actual dates.

## Version 1 (saved 2022-11-16, file câu1.mpp)

Note of the change: Upload file QLDAPM

| ID | WBS | Task | Duration | Start | Finish | Predecessors | Total float |
| --- | --- | --- | --- | --- | --- | --- | --- |
| 1 | 1 | **Front-end** | 40d | 2022-11-01 | 2022-12-26 |  |  |
| 2 | 1.1 | **Bản đồ các trạm xe buýt** | 16d | 2022-11-02 | 2022-11-23 |  | 0d |
| 3 |  | Vẽ bản đồ địa lý | 6d | 2022-11-08 | 2022-11-15 |  |  |
| 4 |  | Vẽ các điểm trạm trên bản đồ | 6d | 2022-11-02 | 2022-11-23 | 24 |  |
| 5 | 1.2 | **Thông tin của trạm** | 15d | 2022-11-02 | 2022-11-22 |  | 0d |
| 6 |  | Hiển thị các tuyến đi qua trạm (mã tuyến, chiều) | 4d | 2022-11-17 | 2022-11-22 | 23, 3 | 24d |
| 7 |  | Hiển thị thông tin cơ bản của từng tuyến | 4d | 2022-11-02 | 2022-11-07 | 25 |  |
| 8 | 1.3 | **Tìm đường từ trạm A đến trạm B** | 40d | 2022-11-01 | 2022-12-26 |  | 0d |
| 9 |  | Form nhập vị trí hiện tại và vị trí cần đến | 4d | 2022-11-01 | 2022-11-04 |  |  |
| 10 |  | Hiển thị danh sách các đường đi khả thi | 4d | 2022-12-09 | 2022-12-21 | 38 | 3d |
| 11 |  | Vẽ chi tiết tuyến đường hướng dẫn | 4d | 2022-12-16 | 2022-12-26 | 38, 3 | 0d |
| 12 | 1.4 | **Danh sách các tuyến xe buýt** | 4d | 2022-11-11 | 2022-11-16 |  | 0d |
| 13 |  | Hiển thị danh sách các tuyến xe bus (mã tuyến, bến đầu bến cuối, giá tiền, đánh giá) | 4d | 2022-11-11 | 2022-11-16 | 32 |  |
| 14 | 1.5 | **Chi tiết của tuyến xe buýt cụ thể** | 15d | 2022-11-11 | 2022-12-01 |  | 11d |
| 15 |  | Hiển thị thông tin chi tiết (các trạm, thời gian di chuyển giữa các trạm, lịch trình xuất phát) | 4d | 2022-11-28 | 2022-12-01 | 35 |  |
| 16 |  | Biểu đồ tuyến đường của các tuyến xe buýt | 4d | 2022-11-11 | 2022-11-16 | 35 | 28d |
| 17 | 1.6 | **Đánh giá tuyến xe buýt** | 4d | 2022-11-17 | 2022-11-22 |  | 0d |
| 18 |  | Đánh giá theo sao, bình luận cho tuyến | 4d | 2022-11-17 | 2022-11-22 | 13 |  |
| 19 | 1.7 | **Tùy chỉnh thông báo** | 17d | 2022-11-23 | 2022-12-15 |  | 0d |
| 20 |  | Thông báo chuyến xe sắp đến trạm | 4d | 2022-11-23 | 2022-12-02 | 42 |  |
| 21 |  | Thông báo khi tuyến xe thay đổi lịch trình | 4d | 2022-12-12 | 2022-12-15 | 43 |  |
| 22 | 2 | **Back-end** | 28d | 2022-11-01 | 2022-12-08 |  | 0d |
| 23 | 2.1 | **Thiết lập cơ sở dữ liệu** | 1d | 2022-11-01 | 2022-11-01 |  | 0d |
| 24 |  | Lấy dữ liệu các trạm từ bên thứ 3 | 1d | 2022-11-01 | 2022-11-01 |  |  |
| 25 |  | Lấy dữ liệu các tuyến từ bên thứ 3 | 1d | 2022-11-01 | 2022-11-01 |  |  |
| 26 |  | Cập nhật dữ liệu theo chu kỳ | 1d | 2022-11-01 | 2022-11-01 |  |  |
| 27 | 2.2 | **API danh sách các trạm xe buýt** | 6d | 2022-11-02 | 2022-11-09 |  | 0d |
| 28 |  | Lấy dữ liệu từ cơ sở dữ liệu | 2d | 2022-11-02 | 2022-11-03 | 24 |  |
| 29 |  | Xử lý và trả về thông tin các trạm | 4d | 2022-11-04 | 2022-11-09 | 28 |  |
| 30 | 2.3 | **API danh sách các tuyến xe buýt** | 7d | 2022-11-02 | 2022-11-10 |  | 0d |
| 31 |  | Lấy dữ liệu từ cơ sở dữ liệu | 2d | 2022-11-02 | 2022-11-03 | 25 |  |
| 32 |  | Xử lý và trả về thông tin các tuyến xe buýt | 5d | 2022-11-04 | 2022-11-10 | 31 |  |
| 33 | 2.4 | **API chi tiết thông tin tuyến xe buýt cụ thể** | 7d | 2022-11-02 | 2022-11-10 |  | 28d |
| 34 |  | Lấy dữ liệu từ cơ sở dữ liệu | 2d | 2022-11-02 | 2022-11-03 | 25 | 28d |
| 35 |  | Xử lý và trả về thông tin của 1 tuyến xe buýt cụ thể | 5d | 2022-11-04 | 2022-11-10 | 34 | 28d |
| 36 | 2.5 | **API danh sách các cách đi khả dụng từ vị trí A đến vị trí B** | 21d | 2022-11-10 | 2022-12-08 |  | 0d |
| 37 |  | Tìm các cách di chuyển từ A đến B theo các tiêu chí: đường đi ngắn nhất, chuyển tuyến ít nhất | 10d | 2022-11-10 | 2022-11-23 | 9 |  |
| 38 |  | Trả về danh sách kèm theo chi tiết đường đi cụ thể của từng cách | 4d | 2022-12-05 | 2022-12-08 | 37 |  |
| 39 | 2.6 | **API đánh giá tuyến xe buýt** | 6d | 2022-11-24 | 2022-12-01 |  | 0d |
| 40 |  | Nhận và lưu trữ đánh giá | 6d | 2022-11-24 | 2022-12-01 | 18 |  |
| 41 | 2.7 | **API gửi thông báo** | 4d | 2022-11-11 | 2022-11-16 |  | 16d |
| 42 |  | Thông báo chuyến xe sắp đến trạm | 4d | 2022-11-11 | 2022-11-16 | 24, 25 | 16d |
| 43 |  | Thông báo khi tuyến xe thay đổi lịch trình | 4d | 2022-11-11 | 2022-11-16 | 25 | 24d |

## Version 2 (data date 2022-11-19, saved 2022-11-19, file câu5.mpp)

Note of the change: Upload file QLDAPM

Last finish 2022-12-26 → 2022-12-27 (+1d). Complete tasks 0 → 17.

Added:

| ID | Task | Duration | Start | Finish |
| --- | --- | --- | --- | --- |
| 1 | Project Statistics (Xem hình statistics.png được gửi đính kèm) | 1d | 2022-11-01 A | 2022-11-01 A |

Changed:

| ID | Task | Start | Finish | Duration | Complete | Total float |
| --- | --- | --- | --- | --- | --- | --- |
| 2 | **Front-end** | 2022-11-01 A | 2022-12-26 → 2022-12-27 (+1d) | 40d → 41d | 0% → 60% |  |
| 3 | **Bản đồ các trạm xe buýt** | 2022-11-02 A | 2022-11-23 → 2022-11-24 (+1d) | 16d → 17d | 0% → 83% |  |
| 4 | Vẽ bản đồ địa lý | 2022-11-08 A | 2022-11-15 → 2022-11-14 A (-1d) | 6d → 5d | 0% → 100% |  |
| 5 | Vẽ các điểm trạm trên bản đồ | 2022-11-02 A | 2022-11-23 → 2022-11-24 (+1d) | 6d → 7d | 0% → 71% |  |
| 6 | **Thông tin của trạm** | 2022-11-02 A |  |  | 0% → 75% | 0d → 25d |
| 7 | Hiển thị các tuyến đi qua trạm (mã tuyến, chiều) | 2022-11-17 A |  |  | 0% → 50% | 24d → 25d |
| 8 | Hiển thị thông tin cơ bản của từng tuyến | 2022-11-02 A | 2022-11-07 A |  | 0% → 100% |  |
| 9 | **Tìm đường từ trạm A đến trạm B** | 2022-11-01 A | 2022-12-26 → 2022-12-27 (+1d) | 40d → 41d | 0% → 33% |  |
| 10 | Form nhập vị trí hiện tại và vị trí cần đến | 2022-11-01 A | 2022-11-04 A |  | 0% → 100% |  |
| 11 | Hiển thị danh sách các đường đi khả thi | 2022-12-09 → 2022-12-16 (+7d) | 2022-12-21 → 2022-12-22 (+1d) | 4d → 5d |  |  |
| 12 | Vẽ chi tiết tuyến đường hướng dẫn | 2022-12-16 → 2022-12-23 (+7d) | 2022-12-26 → 2022-12-27 (+1d) | 4d → 3d |  |  |
| 13 | **Danh sách các tuyến xe buýt** | 2022-11-11 A | 2022-11-16 A |  | 0% → 100% | 0d → none |
| 14 | Hiển thị danh sách các tuyến xe bus (mã tuyến, bến đầu bến cuối, giá tiền, đánh giá) | 2022-11-11 A | 2022-11-16 A |  | 0% → 100% |  |
| 15 | **Chi tiết của tuyến xe buýt cụ thể** | 2022-11-11 A | 2022-12-01 → 2022-12-02 (+1d) | 15d → 16d | 0% → 62% | 11d → 0d |
| 16 | Hiển thị thông tin chi tiết (các trạm, thời gian di chuyển giữa các trạm, lịch trình xuất phát) | 2022-11-28 A | 2022-12-01 → 2022-12-02 (+1d) | 4d → 5d | 0% → 24% |  |
| 17 | Biểu đồ tuyến đường của các tuyến xe buýt | 2022-11-11 A | 2022-11-16 → 2022-11-17 A (+1d) | 4d → 5d | 0% → 100% | 28d → none |
| 18 | **Đánh giá tuyến xe buýt** | 2022-11-17 A |  |  | 0% → 50% |  |
| 19 | Đánh giá theo sao, bình luận cho tuyến | 2022-11-17 A |  |  | 0% → 50% |  |
| 20 | **Tùy chỉnh thông báo** | 2022-11-23 A |  |  | 0% → 30% |  |
| 21 | Thông báo chuyến xe sắp đến trạm | 2022-11-23 A | 2022-12-02 → 2022-12-05 (+3d) |  | 0% → 40% |  |
| 22 | Thông báo khi tuyến xe thay đổi lịch trình | 2022-12-12 A |  |  | 0% → 20% |  |
| 23 | **Back-end** | 2022-11-01 A | 2022-12-08 → 2022-12-09 (+1d) | 28d → 29d | 0% → 76% |  |
| 24 | **Thiết lập cơ sở dữ liệu** | 2022-11-01 A | 2022-11-01 A |  | 0% → 100% | 0d → none |
| 25 | Lấy dữ liệu các trạm từ bên thứ 3 | 2022-11-01 A | 2022-11-01 A |  | 0% → 100% |  |
| 26 | Lấy dữ liệu các tuyến từ bên thứ 3 | 2022-11-01 A | 2022-11-01 A |  | 0% → 100% |  |
| 27 | Cập nhật dữ liệu theo chu kỳ | 2022-11-01 A | 2022-11-01 A |  | 0% → 100% |  |
| 28 | **API danh sách các trạm xe buýt** | 2022-11-02 A | 2022-11-09 A |  | 0% → 100% | 0d → none |
| 29 | Lấy dữ liệu từ cơ sở dữ liệu | 2022-11-02 A | 2022-11-03 A |  | 0% → 100% |  |
| 30 | Xử lý và trả về thông tin các trạm | 2022-11-04 A | 2022-11-09 A |  | 0% → 100% |  |
| 31 | **API danh sách các tuyến xe buýt** | 2022-11-02 A | 2022-11-10 A |  | 0% → 100% | 0d → none |
| 32 | Lấy dữ liệu từ cơ sở dữ liệu | 2022-11-02 A | 2022-11-03 A |  | 0% → 100% |  |
| 33 | Xử lý và trả về thông tin các tuyến xe buýt | 2022-11-04 A | 2022-11-10 A |  | 0% → 100% |  |
| 34 | **API chi tiết thông tin tuyến xe buýt cụ thể** | 2022-11-02 A | 2022-11-10 → 2022-11-09 A (-1d) | 7d → 6d | 0% → 100% | 28d → none |
| 35 | Lấy dữ liệu từ cơ sở dữ liệu | 2022-11-02 A | 2022-11-03 A |  | 0% → 100% | 28d → none |
| 36 | Xử lý và trả về thông tin của 1 tuyến xe buýt cụ thể | 2022-11-04 A | 2022-11-10 → 2022-11-09 A (-1d) | 5d → 4d | 0% → 100% | 28d → none |
| 37 | **API danh sách các cách đi khả dụng từ vị trí A đến vị trí B** | 2022-11-10 A | 2022-12-08 → 2022-12-09 (+1d) | 21d → 22d | 0% → 47% |  |
| 38 | Tìm các cách di chuyển từ A đến B theo các tiêu chí: đường đi ngắn nhất, chuyển tuyến ít nhất | 2022-11-10 A | 2022-11-23 → 2022-11-24 (+1d) |  | 0% → 70% |  |
| 39 | Trả về danh sách kèm theo chi tiết đường đi cụ thể của từng cách |  | 2022-12-08 → 2022-12-09 (+1d) | 4d → 5d |  |  |
| 40 | **API đánh giá tuyến xe buýt** | 2022-11-24 A | 2022-12-01 → 2022-11-30 (-1d) | 6d → 5d | 0% → 20% |  |
| 41 | Nhận và lưu trữ đánh giá | 2022-11-24 A | 2022-12-01 → 2022-11-30 (-1d) | 6d → 5d | 0% → 20% |  |
| 42 | **API gửi thông báo** | 2022-11-11 A | 2022-11-16 A |  | 0% → 100% | 16d → none |
| 43 | Thông báo chuyến xe sắp đến trạm | 2022-11-11 A | 2022-11-16 A |  | 0% → 100% | 16d → none |
| 44 | Thông báo khi tuyến xe thay đổi lịch trình | 2022-11-11 A | 2022-11-16 A |  | 0% → 100% | 24d → none |
